# Cronograma

How a schedule from MS Project changed from version to version. A marks actual dates.

## Version 1 (data date 2023-11-26, saved 2023-11-25)

Note of the change: Merge branch 'main' into gestionpedidos

| ID | WBS | Task | Duration | Start | Finish | Predecessors | Complete | Constraint |
| --- | --- | --- | --- | --- | --- | --- | --- | --- |
| 1 | I 1.1 | **Fase de inicio** | 11d | 2023-10-05 09:00 A | 2023-10-20 19:00 |  | 100% |  |
| 2 |  | Redactar el acta de constitución | 2h | 2023-10-05 09:00 A | 2023-10-05 11:00 A |  | 100% |  |
| 3 |  | Redactar el registro de interesados | 1h | 2023-10-11 09:00 A | 2023-10-11 10:00 A | 2 | 100% |  |
| 4 |  | Redactar el registro de supuestos | 1h | 2023-10-13 09:00 A | 2023-10-13 10:00 A | 2 | 100% |  |
| 5 |  | Comienzo e identificación del proyecto | 1d | 2023-10-05 09:00 A | 2023-10-05 19:00 A |  | 100% |  |
| 6 | D2 | **Fase de planificación** | 15d | 2023-10-20 09:00 A | 2023-11-10 19:00 |  | 100% |  |
| 7 | PD 2.1 | **Fase de planificación PD** | 2h | 2023-10-20 09:00 A | 2023-10-20 11:00 A |  | 100% |  |
| 8 |  | Planificar la dirección del proyecto | 2h | 2023-10-20 09:00 A | 2023-10-20 11:00 A |  | 100% |  |
| 9 |  | Finalización del plan de proyecto | 1d | 2023-10-20 09:00 A | 2023-10-20 19:00 A |  | 100% |  |
| 10 | RQ 2.2 | **Fase de planificación RQ** | 4h | 2023-10-27 09:00 A | 2023-10-27 13:00 |  | 100% |  |
| 11 |  | Redactar la matriz de trazabilidad de los requisitos | 1h | 2023-10-27 09:00 A | 2023-10-27 10:00 A | 8, 12, 18 | 100% |  |
| 12 |  | Redactar el plan de gestión de los requisitos | 2h | 2023-10-27 09:00 A | 2023-10-27 11:00 A | 8, 29, 30 | 100% |  |
| 13 |  | Recopilar los requisitos | 1h | 2023-10-27 09:00 A | 2023-10-27 10:00 A | 8, 12, 18 | 100% |  |
| 14 | AC 2.3 | **Fase de planificación AC** | 11.25h | 2023-10-27 09:00 A | 2023-10-30 12:15 |  | 100% |  |
| 15 |  | Desarrollar diccionario de la EDT | 6h | 2023-10-27 09:00 A | 2023-10-27 17:00 A | 8, 13, 18, 16 | 100% |  |
| 16 |  | Desarrollar la EDT | 2.25h | 2023-10-27 09:00 A | 2023-10-27 11:15 A | 8, 13, 18, 17 | 100% |  |
| 17 |  | Definir el enunciado del alcance | 1h | 2023-10-27 09:00 A | 2023-10-27 10:00 A | 8, 13, 18, 37 | 100% |  |
| 18 |  | Redactar el plan de gestión del alcance | 2h | 2023-10-27 09:00 A | 2023-10-27 11:00 A | 8, 30, 29 | 100% |  |
| 19 | CR 2.4 | **Fase de planificación CR2** | 8.5h | 2023-10-27 09:00 A | 2023-10-30 09:30 |  | 100% |  |
| 20 |  | Crear el cronograma mediante la secuenciación de las actividades | 3.25h | 2023-10-27 09:00 A | 2023-10-27 12:15 A | 8, 18, 24, 23, 22, 21, 32, 37 | 100% |  |
| 21 |  | Realizar estimaciones de las duraciones de las actividades | 2h | 2023-10-27 09:00 A | 2023-10-27 11:00 A | 8, 18, 24 | 100% |  |
| 22 |  | Redactar el listado de hitos | 1h | 2023-10-27 09:00 A | 2023-10-27 10:00 A | 17, 24, 23, 21 | 100% | start no earlier than 2023-10-27 09:00 |
| 23 |  | Redactar el listado de actividades | 1.25h | 2023-10-27 09:00 A | 2023-10-27 10:15 A | 8, 18, 24 | 100% |  |
| 24 |  | Redactar un plan de gestión del cronograma | 1h | 2023-10-27 09:00 A | 2023-10-27 10:00 A | 8, 18 | 100% |  |
| 25 | CO 2.5 | **Fase de planificación CO2** | 3h | 2023-10-27 09:00 A | 2023-10-27 12:00 |  | 100% |  |
| 26 |  | Realizar la estimación de costes | 2h | 2023-10-27 09:00 A | 2023-10-27 11:00 A | 8, 18, 20, 27, 30, 32, 37 | 100% | start no earlier than 2023-10-27 09:00 |
| 27 |  | Realizar el documento de gestión de los costes | 1h | 2023-10-27 09:00 A | 2023-10-27 10:00 A | 8, 24, 38 | 100% | start no earlier than 2023-10-27 09:00 |
| 28 | CA 2.6 | **Fase de planificación CA2** | 3h | 2023-10-27 09:00 A | 2023-10-27 12:00 A |  | 100% |  |
| 29 |  | Definir las métricas de calidad | 1h | 2023-10-27 09:00 A | 2023-10-27 10:00 A | 30 | 100% |  |
| 30 |  | Desarrollar el plan de gestión de la calidad | 2h | 2023-10-27 10:00 A | 2023-10-27 12:00 A | 8, 38 | 100% |  |
| 31 | RE 2.7 | **Fase de planificación RE2** | 1h | 2023-10-27 09:00 A | 2023-10-27 10:00 A |  | 100% |  |
| 32 |  | Desarrollar el plan de gestión de los recursos | 1h | 2023-10-27 09:00 A | 2023-10-27 10:00 A | 8, 13, 18, 30, 37 | 100% |  |
| 33 | AD 2.8 | **Fase de planificación AD2** | 2h | 2023-11-03 09:00 A | 2023-11-03 11:00 |  | 100% |  |
| 34 |  | Realizar las adquisiciones | 1h | 2023-11-03 09:00 A | 2023-11-03 10:00 A | 35 | 100% |  |
| 35 |  | Desarrollar el plan de gestión de adquisiciones | 1h | 2023-11-03 09:00 A | 2023-11-03 10:00 A | 8, 13, 11, 18, 21, 30, 32, 37 | 100% |  |
| 36 | RI 2.9 | **Fase de planificación RI2** | 2h | 2023-11-03 09:00 A | 2023-11-03 11:00 |  | 100% |  |
| 37 |  | Rellenar el registro de riesgos | 1h | 2023-11-03 09:00 A | 2023-11-03 10:00 A | 8, 12, 13, 18, 24, 30 | 100% |  |
| 38 |  | Desarrollar el plan de gestión de riesgos | 1h | 2023-11-03 09:00 A | 2023-11-03 10:00 A | 8 | 100% |  |
| 39 | CB 2.10 | **Fase de planificación CB2** | 1h | 2023-11-03 09:00 A | 2023-11-03 10:00 A |  | 100% |  |
| 40 |  | Definir un plan de gestión del cambio | 1h | 2023-11-03 09:00 A | 2023-11-03 10:00 A | 8, 18, 24, 30, 27, 32, 35, 38, 44 | 100% |  |
| 41 | CF 2.11 | **Fase de planificación CF2** | 1h | 2023-11-03 09:00 A | 2023-11-03 10:00 A |  | 100% |  |
| 42 |  | Desarrollar el plan de gestión de la configuración | 1h | 2023-11-03 09:00 A | 2023-11-03 10:00 A | 8, 12, 13, 11, 18, 17, 16, 15, 24, 23, 22, 21, 20, 27, 26, 30, 29, 32, 35, 38, 40, 44 | 100% |  |
| 43 | CM 2.12 | **Fase de planificación CM2** | 1h | 2023-11-03 09:00 A | 2023-11-03 10:00 |  | 100% |  |
| 44 |  | Planificar la gestión de las comunicaciones | 0.5h | 2023-11-03 09:00 A | 2023-11-03 09:30 A | 8 | 100% |  |
| 45 |  | Revisar el registro de interesados | 0.5h | 2023-11-03 09:00 A | 2023-11-03 09:30 A | 3 | 100% |  |
| 46 | E 3.1 | **Entregable E3.1** | 16d | 2023-11-13 09:00 A | 2023-12-04 19:00 |  | 77% |  |
| 47 | E3.1.1 | **Fase de ejecución. Paquete de trabajo E3.1.1** | 5d | 2023-11-13 09:00 A | 2023-11-17 19:00 |  | 100% |  |
| 48 |  | Realizar Sprint Planning | 1.1h | 2023-11-13 09:00 A | 2023-11-13 10:06 A |  | 100% |  |
| 49 |  | Inicio de la iteración 1 | 1d | 2023-11-13 09:00 A | 2023-11-13 19:00 A |  | 100% |  |
| 50 |  | Creación de la entidad motocicleta | 0.5h | 2023-11-13 09:00 A | 2023-11-13 09:30 A |  | 100% |  |
| 51 |  | Creación de la entidad componentes | 0.5h | 2023-11-13 09:00 A | 2023-11-13 09:30 A |  | 100% |  |
| 52 |  | Creación de la entidad usuario | 0.5h | 2023-11-13 09:00 A | 2023-11-13 09:30 A |  | 100% |  |
| 53 |  | Creación de la entidad reclamaciones | 0.5h | 2023-11-13 09:00 A | 2023-11-13 09:30 A |  | 100% |  |
| 54 |  | Creación de la entidad opinión | 0.5h | 2023-11-13 09:00 A | 2023-11-13 09:30 A |  | 100% |  |
| 55 |  | Creación de la entidad pedido | 0.5h | 2023-11-13 09:00 A | 2023-11-13 09:30 A |  | 100% |  |
| 56 |  | Crear registro de usuarios | 1.5h | 2023-11-14 09:00 A | 2023-11-14 10:30 A | 52 | 100% |  |
| 57 |  | Inicio de sesión de los usuarios | 1h | 2023-11-14 10:00 A | 2023-11-14 11:00 A | 56, 52 | 100% |  |
| 58 |  | Añadir edición del perfil de los usuarios | 1h | 2023-11-14 09:00 A | 2023-11-14 10:00 A | 52 | 100% |  |
| 59 |  | Añadir reglas de negocio sobre los usuarios | 0.55h | 2023-11-15 09:00 A | 2023-11-15 09:33 A | 52, 58, 56 | 100% |  |
| 60 |  | Popular la base de datos | 4h | 2023-11-15 09:00 A | 2023-11-15 13:00 A | 50, 51, 52, 53, 54, 55 | 100% |  |
| 61 |  | Añadir la visualización/ búsqueda de productos | 4h | 2023-11-16 09:00 A | 2023-11-16 13:00 A | 50, 51 | 100% |  |
| 62 |  | Añadir marca corporativa a la interfaz | 4h | 2023-11-15 09:00 A | 2023-11-15 13:00 A |  | 100% |  |
| 63 |  | Realizar Sprint Review | 0.5h | 2023-11-16 09:00 A | 2023-11-16 09:30 A |  | 100% |  |
| 64 |  | Realizar Sprint Retrospective | 1h | 2023-11-17 09:00 A | 2023-11-17 10:00 A | 63 | 100% |  |
| 65 |  | Inicio de la fase de ejecución | 1d | 2023-11-13 09:00 A | 2023-11-13 19:00 A |  | 100% |  |
| 66 | E3.1.2 | **Fase de ejecución. Paquete de trabajo E3.1.2** | 6d | 2023-11-20 09:00 A | 2023-11-27 19:00 |  | 100% |  |
| 67 |  | Realizar Sprint Planning | 0.5h | 2023-11-20 09:00 A | 2023-11-20 09:30 A |  | 100% |  |
| 68 |  | Añadir cesta de la compra y permitir su modificación | 2.75h | 2023-11-20 09:00 A | 2023-11-20 11:45 A | 61 | 100% |  |
| 69 |  | Inicio de la iteración 2 | 1d | 2023-11-20 09:00 A | 2023-11-20 19:00 A |  | 100% |  |
| 70 |  | Desarrollar la finalización de las compras | 4h | 2023-11-21 09:00 A | 2023-11-21 13:00 A | 68 | 100% |  |

| ID | WBS | Task | Duration | Start | Finish | Predecessors | Complete |
| --- | --- | --- | --- | --- | --- | --- | --- |
| 71 |  | Incluir regla de negocio sobre el stock de productos | 0.55h | 2023-11-22 09:00 A | 2023-11-22 09:33 A | 70 | 100% |
| 72 |  | Añadir regla de negocio sobre el envío gratuito | 0.55h | 2023-11-22 09:00 A | 2023-11-22 09:33 A | 70 | 100% |
| 73 |  | Desarrollar envío de correos tras completar un pedido | 1.5h | 2023-11-22 09:00 A | 2023-11-22 10:30 A | 70 | 100% |
| 74 |  | Hacer datos de la tienda siempre visibles | 0.25h | 2023-11-21 09:00 A | 2023-11-21 09:15 A |  | 100% |
| 75 |  | Señalar productos agotados | 0.55h | 2023-11-20 09:00 A | 2023-11-20 09:33 A | 61 | 100% |
| 76 |  | Añadir protocolos de seguridad a la aplicación | 3h | 2023-11-23 09:00 A | 2023-11-23 12:00 A |  | 100% |
| 77 |  | Implementar consulta de estados del pedido para cliente registrado y no registrado | 5h | 2023-11-23 15:00 A | 2023-11-24 10:00 A | 70, 73 | 100% |
| 78 |  | Realizar Sprint Review | 0.5h | 2023-11-24 09:00 A | 2023-11-24 09:30 A |  | 100% |
| 79 |  | Realizar Sprint Retrospective | 1h | 2023-11-27 09:00 A | 2023-11-27 10:00 A | 63 | 100% |
| 80 | E3.1.3 | **Fase de ejecución. Paquete de trabajo E3.1.3** | 6d | 2023-11-27 09:00 | 2023-12-04 19:00 |  |  |
| 81 |  | Realizar Sprint Planning | 1.1h | 2023-11-27 09:00 | 2023-11-27 10:06 |  |  |
| 82 |  | Añadir protocolo de configuración de motocicletas | 3h | 2023-11-30 09:00 | 2023-11-30 12:00 | 60 |  |
| 83 |  | Añadir funcionalidad de opiniones para los usuarios | 1.5h | 2023-11-27 09:00 | 2023-11-27 10:30 | 54, 57 |  |
| 84 |  | Añadir funcionalidad de reclamaciones para los usuarios | 1.5h | 2023-11-28 09:00 | 2023-11-28 10:30 | 57, 53 |  |
| 85 |  | Implementar gestión de los clientes para administradores | 1.5h | 2023-11-28 09:00 | 2023-11-28 10:30 | 52 |  |
| 86 |  | Implementar gestión de los pedidos para los administradores | 1.5h | 2023-11-29 09:00 | 2023-11-29 10:30 | 55 |  |
| 87 |  | Implementar gestión de los productos para los administradores | 1.5h | 2023-11-29 09:00 | 2023-11-29 10:30 | 51, 50 |  |
| 88 |  | Implementar gestión de las reclamaciones para los administradores | 1.5h | 2023-11-27 09:00 | 2023-11-27 10:30 | 53 |  |
| 89 |  | Preparar entrega | 4h | 2023-12-01 09:00 | 2023-12-01 13:00 |  |  |
| 90 |  | Implementar gestión de las ventas para administradores | 1.5h | 2023-11-30 09:00 | 2023-11-30 10:30 |  |  |
| 91 |  | Realizar Sprint Review | 0.5h | 2023-11-30 09:00 | 2023-11-30 09:30 |  |  |
| 92 |  | Realizar Sprint Retrospective | 1h | 2023-12-04 09:00 | 2023-12-04 10:00 | 63 |  |
| 93 |  | Inicio de la iteración 3 | 1d | 2023-11-27 09:00 | 2023-11-27 19:00 |  |  |
| 94 | S 3.2 | **Entregable S3.2** | 16d | 2023-11-13 09:00 A | 2023-12-04 19:00 |  | 70% |
| 95 |  | Realizar seguimiento del proyecto y generar la documentación respectiva a la iteración 1 | 10h | 2023-11-17 09:00 A | 2023-11-20 11:00 A | 47 | 100% |
| 96 |  | Inicio de la fase de seguimiento y control | 1d | 2023-11-13 09:00 A | 2023-11-13 19:00 A |  | 100% |
| 97 |  | Realizar seguimiento del proyecto y generar la documentación respectiva a la iteración 2 | 10h | 2023-11-24 09:00 A | 2023-11-27 11:00 A | 66 | 100% |
| 98 |  | Realizar seguimiento del proyecto y generar la documentación respectiva a la iteración 3 | 12.2h | 2023-12-01 09:00 | 2023-12-04 15:12 | 80 |  |
| 99 | CI4 | **Fase de cierre. Paquete de trabajo CI4** | 7d | 2023-12-04 09:00 | 2023-12-14 19:00 |  |  |
| 100 |  | Cierre del proyecto | 1d | 2023-12-04 09:00 | 2023-12-04 19:00 |  |  |
| 101 |  | Presentación del proyecto | 1d | 2023-12-04 09:00 | 2023-12-04 19:00 |  |  |
| 102 |  | Entrega del proyecto | 1d | 2023-12-04 09:00 | 2023-12-04 19:00 |  |  |
| 103 |  | Desarrollar un manual para el despliegue del contenedor | 1h | 2023-12-05 09:00 | 2023-12-05 10:00 | 46 |  |
| 104 |  | Desarrollo de la presentación de cierre | 1h | 2023-12-12 09:00 | 2023-12-12 10:00 | 105 |  |
| 105 |  | Desarrollo del informe de cierre | 1h | 2023-12-11 09:00 | 2023-12-11 10:00 | 46 |  |
| 106 |  | Registro de lecciones aprendidas | 1h | 2023-12-05 09:00 | 2023-12-05 10:00 | 94, 46 |  |

## Version 2 (data date 2023-12-02, saved 2023-12-02)

Note of the change: Update documentos

Last finish stays 2023-12-14. Complete tasks 65 → 80.

Added:

| ID | Task | Duration | Start | Finish | Resources |
| --- | --- | --- | --- | --- | --- |
| 93 | Manual para la compra | 1h | 2023-11-27 09:00 A | 2023-11-27 10:00 A | Personal (Equipo de desarrollo); Ordenador portátil [1 Horas] |

Changed:

| ID | Task | Start | Finish | Duration | Complete | Other |
| --- | --- | --- | --- | --- | --- | --- |
| 16 | Desarrollar la EDT |  | 2023-10-27 11:15 A → 2023-10-27 11:30 A | 2.25h → 2.5h |  | resources Personal (Equipo de dirección); Ordenador portátil [3 Horas] → Personal (Equipo de dirección); Ordenador portátil [4 Horas] |
| 20 | Crear el cronograma mediante la secuenciación de las actividades |  | 2023-10-27 12:15 A → 2023-10-27 12:30 A | 3.25h → 3.5h |  | resources Personal (Equipo de dirección); Ordenador portátil [4 Horas] → Personal (Equipo de dirección); Ordenador portátil [5 Horas] |
| 23 | Redactar el listado de actividades |  | 2023-10-27 10:15 A → 2023-10-27 10:30 A | 1.25h → 1.5h |  | resources Personal (Equipo de dirección); Ordenador portátil [2 Horas] → Personal (Equipo de dirección); Ordenador portátil [3 Horas] |
| 46 | **Entregable E3.1** |  |  |  | 77% → 100% |  |
| 80 | **Fase de ejecución. Paquete de trabajo E3.1.3** | 2023-11-27 09:00 A |  |  | 0% → 100% |  |
| 81 | Realizar Sprint Planning | 2023-11-27 09:00 A | 2023-11-27 10:06 → 2023-11-27 09:30 A | 1.1h → 0.5h | 0% → 100% | resources Personal (Equipo de desarrollo); Ordenador portátil [1.1 Horas] → Personal (Equipo de desarrollo); Ordenador portátil [12.27 Horas] |
| 82 | Añadir protocolo de configuración de motocicletas | 2023-11-30 09:00 A | 2023-11-30 12:00 → 2023-11-30 13:00 A | 3h → 4h | 0% → 100% |  |
| 83 | Añadir funcionalidad de opiniones para los usuarios | 2023-11-27 09:00 A | 2023-11-27 10:30 → 2023-11-27 11:00 A | 1.5h → 2h | 0% → 100% | resources Personal (Equipo de desarrollo); Ordenador portátil [1.5 Horas] → Personal (Equipo de desarrollo); Ordenador portátil [2.5 Horas] |
| 84 | Añadir funcionalidad de reclamaciones para los usuarios | 2023-11-28 09:00 A | 2023-11-28 10:30 → 2023-11-28 10:00 A | 1.5h → 1h | 0% → 100% |  |
| 85 | Implementar gestión de los clientes para administradores | 2023-11-28 09:00 A | 2023-11-28 10:30 → 2023-11-28 11:00 A | 1.5h → 2h | 0% → 100% |  |
| 86 | Implementar gestión de los pedidos para los administradores | 2023-11-29 09:00 A | 2023-11-29 10:30 A |  | 0% → 100% |  |
| 87 | Implementar gestión de los productos para los administradores | 2023-11-29 09:00 A | 2023-11-29 10:30 → 2023-11-29 12:00 A | 1.5h → 3h | 0% → 100% |  |
| 88 | Implementar gestión de las reclamaciones para los administradores | 2023-11-27 09:00 A | 2023-11-27 10:30 → 2023-11-27 10:00 A | 1.5h → 1h | 0% → 100% |  |
| 89 | Preparar entrega | 2023-12-01 09:00 A | 2023-12-01 13:00 A |  | 0% → 100% |  |
| 90 | Implementar gestión de las ventas para administradores | 2023-11-30 09:00 A | 2023-11-30 10:30 → 2023-11-30 11:00 A | 1.5h → 2h | 0% → 100% |  |
| 91 | Realizar Sprint Review | 2023-11-30 09:00 A | 2023-11-30 09:30 A |  | 0% → 100% |  |
| 92 | Realizar Sprint Retrospective | 2023-12-04 09:00 → 2023-12-01 09:00 A (-3d) | 2023-12-04 10:00 → 2023-12-01 10:00 A (-3d) |  | 0% → 100% |  |
| 94 | Inicio de la iteración 3 | 2023-11-27 09:00 A | 2023-11-27 19:00 A |  | 0% → 100% |  |
| 95 | **Entregable S3.2** |  |  |  | 70% → 100% |  |
| 99 | Realizar seguimiento del proyecto y generar la documentación respectiva a la iteración 3 | 2023-12-01 09:00 A | 2023-12-04 15:12 → 2023-12-04 13:00 A | 12.2h → 12h | 0% → 100% |  |
