# Cronograma

How a schedule from MS Project changed from version to version. A marks actual dates.

## Version 1 (saved 2023-11-10, file G2.15 - Cronograma.mpp)

Note of the change: Entrega borrador plan de proyecto

| ID | WBS | Task | Duration | Start | Finish | Predecessors | Complete | Constraint |
| --- | --- | --- | --- | --- | --- | --- | --- | --- |
| 1 | I 1.1 | **Fase de inicio** | 11d | 2023-10-05 09:00 A | 2023-10-20 19:00 |  | 100% |  |
| 2 |  | Redactar el acta de constitución | 2h | 2023-10-05 09:00 A | 2023-10-05 11:00 A |  | 100% |  |
| 3 |  | Redactar el registro de interesados | 1h | 2023-10-11 09:00 A | 2023-10-11 10:00 A | 2 | 100% |  |
| 4 |  | Redactar el registro de supuestos | 1h | 2023-10-13 09:00 A | 2023-10-13 10:00 A | 2 | 100% |  |
| 5 |  | Comienzo e identificación del proyecto | 1d | 2023-10-05 09:00 A | 2023-10-05 19:00 A |  | 100% |  |
| 6 | D2 | **Fase de planificación** | 15d | 2023-10-20 09:00 A | 2023-11-10 19:00 |  | 100% |  |
| 7 | PD 2.1 | **Fase de planificación PD** | 2h | 2023-10-20 09:00 A | 2023-10-20 11:00 A |  | 100% |  |
| 8 |  | Planificar la dirección del proyecto | 2h | 2023-10-20 09:00 A | 2023-10-20 11:00 A |  | 100% |  |
| 9 |  | Finalización del plan de proyecto | 1d | 2023-10-20 09:00 A | 2023-10-20 19:00 A |  | 100% |  |
| 10 | RQ 2.2 | **Fase de planificación RQ** | 4h | 2023-10-27 09:00 A | 2023-10-27 13:00 |  | 100% |  |
| 11 |  | Redactar la matriz de trazabilidad de los requisitos | 1h | 2023-10-27 09:00 A | 2023-10-27 10:00 A | 8, 12, 18 | 100% |  |
| 12 |  | Redactar el plan de gestión de los requisitos | 2h | 2023-10-27 09:00 A | 2023-10-27 11:00 A | 8, 29, 30 | 100% |  |
| 13 |  | Recopilar los requisitos | 1h | 2023-10-27 09:00 A | 2023-10-27 10:00 A | 8, 12, 18 | 100% |  |
| 14 | AC 2.3 | **Fase de planificación AC** | 11h | 2023-10-27 09:00 A | 2023-10-30 12:00 |  | 100% |  |
| 15 |  | Desarrollar diccionario de la EDT | 6h | 2023-10-27 09:00 A | 2023-10-27 17:00 A | 8, 13, 18, 16 | 100% |  |
| 16 |  | Desarrollar la EDT | 2h | 2023-10-27 09:00 A | 2023-10-27 11:00 A | 8, 13, 18, 17 | 100% |  |
| 17 |  | Definir el enunciado del alcance | 1h | 2023-10-27 09:00 A | 2023-10-27 10:00 A | 8, 13, 18, 37 | 100% |  |
| 18 |  | Redactar el plan de gestión del alcance | 2h | 2023-10-27 09:00 A | 2023-10-27 11:00 A | 8, 30, 29 | 100% |  |
| 19 | CR 2.4 | **Fase de planificación CR2** | 8.08h | 2023-10-27 09:00 A | 2023-10-30 09:04 |  | 100% |  |
| 20 |  | Crear el cronograma mediante la secuenciación de las actividades | 3h | 2023-10-27 09:00 A | 2023-10-27 12:00 A | 8, 18, 24, 23, 22, 21, 32, 37 | 100% |  |
| 21 |  | Realizar estimaciones de las duraciones de las actividades | 2h | 2023-10-27 09:00 A | 2023-10-27 11:00 A | 8, 18, 24 | 100% |  |
| 22 |  | Redactar el listado de hitos | 1h | 2023-10-27 09:00 A | 2023-10-27 10:00 A | 17, 24, 23, 21 | 100% | start no earlier than 2023-10-27 09:00 |
| 23 |  | Redactar el listado de actividades | 1h | 2023-10-27 09:00 A | 2023-10-27 10:00 A | 8, 18, 24 | 100% |  |
| 24 |  | Redactar un plan de gestión del cronograma | 1h | 2023-10-27 09:00 A | 2023-10-27 10:00 A | 8, 18 | 100% |  |
| 25 | CO 2.5 | **Fase de planificación CO2** | 3h | 2023-10-27 09:00 A | 2023-10-27 12:00 |  | 100% |  |
| 26 |  | Realizar la estimación de costes | 2h | 2023-10-27 09:00 A | 2023-10-27 11:00 A | 8, 18, 20, 27, 30, 32, 37 | 100% | start no earlier than 2023-10-27 09:00 |
| 27 |  | Realizar el documento de gestión de los costes | 1h | 2023-10-27 09:00 A | 2023-10-27 10:00 A | 8, 24, 38 | 100% | start no earlier than 2023-10-27 09:00 |
| 28 | CA 2.6 | **Fase de planificación CA2** | 3h | 2023-10-27 09:00 A | 2023-10-27 12:00 A |  | 100% |  |
| 29 |  | Definir las métricas de calidad | 1h | 2023-10-27 09:00 A | 2023-10-27 10:00 A | 30 | 100% |  |
| 30 |  | Desarrollar el plan de gestión de la calidad | 2h | 2023-10-27 10:00 A | 2023-10-27 12:00 A | 8, 38 | 100% |  |
| 31 | RE 2.7 | **Fase de planificación RE2** | 1h | 2023-10-27 09:00 A | 2023-10-27 10:00 A |  | 100% |  |
| 32 |  | Desarrollar el plan de gestión de los recursos | 1h | 2023-10-27 09:00 A | 2023-10-27 10:00 A | 8, 13, 18, 30, 37 | 100% |  |
| 33 | AD 2.8 | **Fase de planificación AD2** | 2h | 2023-11-03 09:00 A | 2023-11-03 11:00 |  | 100% |  |
| 34 |  | Realizar las adquisiciones | 1h | 2023-11-03 09:00 A | 2023-11-03 10:00 A | 35 | 100% |  |
| 35 |  | Desarrollar el plan de gestión de adquisiciones | 1h | 2023-11-03 09:00 A | 2023-11-03 10:00 A | 8, 13, 11, 18, 21, 30, 32, 37 | 100% |  |
| 36 | RI 2.9 | **Fase de planificación RI2** | 2h | 2023-11-03 09:00 A | 2023-11-03 11:00 |  | 100% |  |
| 37 |  | Rellenar el registro de riesgos | 1h | 2023-11-03 09:00 A | 2023-11-03 10:00 A | 8, 12, 13, 18, 24, 30 | 100% |  |
| 38 |  | Desarrollar el plan de gestión de riesgos | 1h | 2023-11-03 09:00 A | 2023-11-03 10:00 A | 8 | 100% |  |
| 39 | CB 2.10 | **Fase de planificación CB2** | 1h | 2023-11-03 09:00 A | 2023-11-03 10:00 A |  | 100% |  |
| 40 |  | Definir un plan de gestión del cambio | 1h | 2023-11-03 09:00 A | 2023-11-03 10:00 A | 8, 18, 24, 30, 27, 32, 35, 38, 44 | 100% |  |
| 41 | CF 2.11 | **Fase de planificación CF2** | 1h | 2023-11-03 09:00 A | 2023-11-03 10:00 A |  | 100% |  |
| 42 |  | Desarrollar el plan de gestión de la configuración | 1h | 2023-11-03 09:00 A | 2023-11-03 10:00 A | 8, 12, 13, 11, 18, 17, 16, 15, 24, 23, 22, 21, 20, 27, 26, 30, 29, 32, 35, 38, 40, 44 | 100% |  |
| 43 | CM 2.12 | **Fase de planificación CM2** | 1h | 2023-11-03 09:00 A | 2023-11-03 10:00 |  | 100% |  |
| 44 |  | Planificar la gestión de las comunicaciones | 0.5h | 2023-11-03 09:00 A | 2023-11-03 09:30 A | 8 | 100% |  |
| 45 |  | Revisar el registro de interesados | 0.5h | 2023-11-03 09:00 A | 2023-11-03 09:30 A | 3 | 100% |  |
| 46 | E 3.1 | **Entregable E3.1** | 16d | 2023-11-13 09:00 | 2023-12-04 19:00 |  |  |  |
| 47 | E3.1.1 | **Fase de ejecución. Paquete de trabajo E3.1.1** | 5d | 2023-11-13 09:00 | 2023-11-17 19:00 |  |  |  |
| 48 |  | Realizar Sprint Planning | 1.1h | 2023-11-13 09:00 | 2023-11-13 10:06 |  |  |  |
| 49 |  | Inicio de la iteración 1 | 1d | 2023-11-13 09:00 | 2023-11-13 19:00 |  |  |  |
| 50 |  | Creación de la entidad motocicleta | 0.55h | 2023-11-13 09:00 | 2023-11-13 09:33 |  |  |  |
| 51 |  | Creación de la entidad componentes | 0.55h | 2023-11-13 09:00 | 2023-11-13 09:33 |  |  |  |
| 52 |  | Creación de la entidad usuario | 0.55h | 2023-11-13 09:00 | 2023-11-13 09:33 |  |  |  |
| 53 |  | Creación de la entidad reclamaciones | 0.55h | 2023-11-13 09:00 | 2023-11-13 09:33 |  |  |  |
| 54 |  | Creación de la entidad opinión | 0.55h | 2023-11-13 09:00 | 2023-11-13 09:33 |  |  |  |
| 55 |  | Creación de la entidad pedido | 0.55h | 2023-11-13 09:00 | 2023-11-13 09:33 |  |  |  |
| 56 |  | Crear registro de usuarios | 1h | 2023-11-14 09:00 | 2023-11-14 10:00 | 52 |  |  |
| 57 |  | Inicio de sesión de los usuarios | 1h | 2023-11-14 10:00 | 2023-11-14 11:00 | 56, 52 |  |  |
| 58 |  | Añadir edición del perfil de los usuarios | 1h | 2023-11-14 09:00 | 2023-11-14 10:00 | 52 |  |  |
| 59 |  | Añadir reglas de negocio sobre los usuarios | 0.55h | 2023-11-15 09:00 | 2023-11-15 09:33 | 52, 58, 56 |  |  |
| 60 |  | Popular la base de datos | 3h | 2023-11-15 09:00 | 2023-11-15 12:00 | 50, 51, 52, 53, 54, 55 |  |  |
| 61 |  | Añadir la visualización/ búsqueda de productos | 3h | 2023-11-16 09:00 | 2023-11-16 12:00 | 50, 51 |  |  |
| 62 |  | Añadir marca corporativa a la interfaz | 3h | 2023-11-15 09:00 | 2023-11-15 12:00 |  |  |  |
| 63 |  | Realizar Sprint Review | 0.5h | 2023-11-16 09:00 | 2023-11-16 09:30 |  |  |  |
| 64 |  | Realizar Sprint Retrospective | 1h | 2023-11-17 09:00 | 2023-11-17 10:00 | 63 |  |  |
| 65 |  | Inicio de la fase de ejecución | 1d | 2023-11-13 09:00 | 2023-11-13 19:00 |  |  |  |
| 66 | E3.1.2 | **Fase de ejecución. Paquete de trabajo E3.1.2** | 6d | 2023-11-20 09:00 | 2023-11-27 19:00 |  |  |  |
| 67 |  | Realizar Sprint Planning | 1.1h | 2023-11-20 09:00 | 2023-11-20 10:06 |  |  |  |
| 68 |  | Añadir cesta de la compra y permitir su modificación | 2h | 2023-11-20 09:00 | 2023-11-20 11:00 | 61 |  |  |
| 69 |  | Inicio de la iteración 2 | 1d | 2023-11-20 09:00 | 2023-11-20 19:00 |  |  |  |
| 70 |  | Desarrollar la finalización de las compras | 3h | 2023-11-21 09:00 | 2023-11-21 12:00 | 68 |  |  |

| ID | WBS | Task | Duration | Start | Finish | Predecessors |
| --- | --- | --- | --- | --- | --- | --- |
| 71 |  | Incluir regla de negocio sobre el stock de productos | 0.55h | 2023-11-22 09:00 | 2023-11-22 09:33 | 70 |
| 72 |  | Añadir regla de negocio sobre el envío gratuito | 0.55h | 2023-11-22 09:00 | 2023-11-22 09:33 | 70 |
| 73 |  | Desarrollar envío de correos tras completar un pedido | 1.5h | 2023-11-22 09:00 | 2023-11-22 10:30 | 70 |
| 74 |  | Hacer datos de la tienda siempre visibles | 1h | 2023-11-21 09:00 | 2023-11-21 10:00 |  |
| 75 |  | Señalar productos agotados | 0.55h | 2023-11-20 09:00 | 2023-11-20 09:33 | 61 |
| 76 |  | Añadir protocolos de seguridad a la aplicación | 4h | 2023-11-23 09:00 | 2023-11-23 13:00 |  |
| 77 |  | Implementar consulta de estados del pedido para cliente registrado y no registrado | 2h | 2023-11-23 15:00 | 2023-11-23 17:00 | 70, 73 |
| 78 |  | Realizar Sprint Review | 0.5h | 2023-11-24 09:00 | 2023-11-24 09:30 |  |
| 79 |  | Realizar Sprint Retrospective | 1h | 2023-11-27 09:00 | 2023-11-27 10:00 | 63 |
| 80 | E3.1.3 | **Fase de ejecución. Paquete de trabajo E3.1.3** | 6d | 2023-11-27 09:00 | 2023-12-04 19:00 |  |
| 81 |  | Realizar Sprint Planning | 1.1h | 2023-11-27 09:00 | 2023-11-27 10:06 |  |
| 82 |  | Añadir protocolo de configuración de motocicletas | 3h | 2023-11-30 09:00 | 2023-11-30 12:00 | 60 |
| 83 |  | Añadir funcionalidad de opiniones para los usuarios | 1.5h | 2023-11-27 09:00 | 2023-11-27 10:30 | 54, 57 |
| 84 |  | Añadir funcionalidad de reclamaciones para los usuarios | 1.5h | 2023-11-28 09:00 | 2023-11-28 10:30 | 57, 53 |
| 85 |  | Implementar gestión de los clientes para administradores | 1.5h | 2023-11-28 09:00 | 2023-11-28 10:30 | 52 |
| 86 |  | Implementar gestión de los pedidos para los administradores | 1.5h | 2023-11-29 09:00 | 2023-11-29 10:30 | 55 |
| 87 |  | Implementar gestión de los productos para los administradores | 1.5h | 2023-11-29 09:00 | 2023-11-29 10:30 | 51, 50 |
| 88 |  | Implementar gestión de las reclamaciones para los administradores | 1.5h | 2023-11-27 09:00 | 2023-11-27 10:30 | 53 |
| 89 |  | Implementar gestión de las ventas para administradores | 1.5h | 2023-11-30 09:00 | 2023-11-30 10:30 |  |
| 90 |  | Realizar Sprint Review | 0.5h | 2023-11-30 09:00 | 2023-11-30 09:30 |  |
| 91 |  | Realizar Sprint Retrospective | 1h | 2023-12-04 09:00 | 2023-12-04 10:00 | 63 |
| 92 |  | Inicio de la iteración 3 | 1d | 2023-11-27 09:00 | 2023-11-27 19:00 |  |
| 93 | S 3.2 | **Entregable S3.2** | 16d | 2023-11-13 09:00 | 2023-12-04 19:00 |  |
| 94 |  | Realizar seguimiento del proyecto y generar la documentación respectiva a la iteración 1 | 12.2h | 2023-11-17 09:00 | 2023-11-20 15:12 | 47 |
| 95 |  | Inicio de la fase de seguimiento y control | 1d | 2023-11-13 09:00 | 2023-11-13 19:00 |  |
| 96 |  | Realizar seguimiento del proyecto y generar la documentación respectiva a la iteración 2 | 12.2h | 2023-11-24 09:00 | 2023-11-27 15:12 | 66 |
| 97 |  | Realizar seguimiento del proyecto y generar la documentación respectiva a la iteración 3 | 12.2h | 2023-12-01 09:00 | 2023-12-04 15:12 | 80 |
| 98 | CI4 | **Fase de cierre. Paquete de trabajo CI4** | 7d | 2023-12-04 09:00 | 2023-12-14 19:00 |  |
| 99 |  | Cierre del proyecto | 1d | 2023-12-04 09:00 | 2023-12-04 19:00 |  |
| 100 |  | Presentación del proyecto | 1d | 2023-12-04 09:00 | 2023-12-04 19:00 |  |
| 101 |  | Entrega del proyecto | 1d | 2023-12-04 09:00 | 2023-12-04 19:00 |  |
| 102 |  | Desarrollar un manual para el despliegue del contenedor | 1h | 2023-12-05 09:00 | 2023-12-05 10:00 | 46 |
| 103 |  | Desarrollo de la presentación de cierre | 1h | 2023-12-12 09:00 | 2023-12-12 10:00 | 104 |
| 104 |  | Desarrollo del informe de cierre | 1h | 2023-12-11 09:00 | 2023-12-11 10:00 | 46 |
| 105 |  | Registro de lecciones aprendidas | 1h | 2023-12-05 09:00 | 2023-12-05 10:00 | 93, 46 |

## Version 2 (data date 2023-11-16, saved 2023-11-17, file Cronograma.mpp)

Note of the change: Merge branch 'main' into logica-carrito

Last finish stays 2023-12-14. Complete tasks 31 → 51.

Changed:

| ID | Task | Start | Finish | Duration | Complete | Other |
| --- | --- | --- | --- | --- | --- | --- |
| 46 | **Entregable E3.1** | 2023-11-13 09:00 A |  |  | 0% → 53% |  |
| 47 | **Fase de ejecución. Paquete de trabajo E3.1.1** | 2023-11-13 09:00 A |  |  | 0% → 100% |  |
| 48 | Realizar Sprint Planning | 2023-11-13 09:00 A | 2023-11-13 10:06 A |  | 0% → 100% |  |
| 49 | Inicio de la iteración 1 | 2023-11-13 09:00 A | 2023-11-13 19:00 A |  | 0% → 100% |  |
| 50 | Creación de la entidad motocicleta | 2023-11-13 09:00 A | 2023-11-13 09:33 → 2023-11-13 09:30 A | 0.55h → 0.5h | 0% → 100% |  |
| 51 | Creación de la entidad componentes | 2023-11-13 09:00 A | 2023-11-13 09:33 → 2023-11-13 09:30 A | 0.55h → 0.5h | 0% → 100% |  |
| 52 | Creación de la entidad usuario | 2023-11-13 09:00 A | 2023-11-13 09:33 → 2023-11-13 09:30 A | 0.55h → 0.5h | 0% → 100% |  |
| 53 | Creación de la entidad reclamaciones | 2023-11-13 09:00 A | 2023-11-13 09:33 → 2023-11-13 09:30 A | 0.55h → 0.5h | 0% → 100% |  |
| 54 | Creación de la entidad opinión | 2023-11-13 09:00 A | 2023-11-13 09:33 → 2023-11-13 09:30 A | 0.55h → 0.5h | 0% → 100% |  |
| 55 | Creación de la entidad pedido | 2023-11-13 09:00 A | 2023-11-13 09:33 → 2023-11-13 09:30 A | 0.55h → 0.5h | 0% → 100% |  |
| 56 | Crear registro de usuarios | 2023-11-14 09:00 A | 2023-11-14 10:00 → 2023-11-14 10:30 A | 1h → 1.5h | 0% → 100% | resources Personal (Equipo de desarrollo); Ordenador portátil [1 Horas] → Personal (Equipo de desarrollo); Ordenador portátil [1.5 Horas] |
| 57 | Inicio de sesión de los usuarios | 2023-11-14 10:00 A | 2023-11-14 11:00 A |  | 0% → 100% |  |
| 58 | Añadir edición del perfil de los usuarios | 2023-11-14 09:00 A | 2023-11-14 10:00 A |  | 0% → 100% |  |
| 59 | Añadir reglas de negocio sobre los usuarios | 2023-11-15 09:00 A | 2023-11-15 09:33 A |  | 0% → 100% |  |
| 60 | Popular la base de datos | 2023-11-15 09:00 A | 2023-11-15 12:00 → 2023-11-15 13:00 A | 3h → 4h | 0% → 100% | resources Personal (Equipo de desarrollo); Ordenador portátil [3 Horas] → Personal (Equipo de desarrollo); Ordenador portátil [5.33 Horas] |
| 61 | Añadir la visualización/ búsqueda de productos | 2023-11-16 09:00 A | 2023-11-16 12:00 → 2023-11-16 13:00 A | 3h → 4h | 0% → 100% |  |
| 62 | Añadir marca corporativa a la interfaz | 2023-11-15 09:00 A | 2023-11-15 12:00 → 2023-11-15 13:00 A | 3h → 4h | 0% → 100% | resources Personal (Equipo de desarrollo); Ordenador portátil [3 Horas] → Personal (Equipo de desarrollo); Ordenador portátil [4 Horas] |
| 63 | Realizar Sprint Review | 2023-11-16 09:00 A | 2023-11-16 09:30 A |  | 0% → 100% |  |
| 64 | Realizar Sprint Retrospective | 2023-11-17 09:00 A | 2023-11-17 10:00 A |  | 0% → 100% |  |
| 65 | Inicio de la fase de ejecución | 2023-11-13 09:00 A | 2023-11-13 19:00 A |  | 0% → 100% |  |
| 93 | **Entregable S3.2** | 2023-11-13 09:00 A |  |  | 0% → 42% |  |
| 94 | Realizar seguimiento del proyecto y generar la documentación respectiva a la iteración 1 | 2023-11-17 09:00 A | 2023-11-20 15:12 → 2023-11-20 11:00 A | 12.2h → 10h | 0% → 100% |  |
| 95 | Inicio de la fase de seguimiento y control | 2023-11-13 09:00 A | 2023-11-13 19:00 A |  | 0% → 100% |  |

## Version 3 (data date 2023-12-02, saved 2023-12-09, file Cronograma.mpp)

Note of the change: cronograma actualizado a la ultima version

Last finish stays 2023-12-14. Complete tasks 51 → 87.

Added:

| ID | Task | Duration | Start | Finish | Resources |
| --- | --- | --- | --- | --- | --- |
| 89 | Preparar entrega | 4h | 2023-12-01 09:00 A | 2023-12-01 13:00 A | Ordenador portátil [4 Horas]; Personal (Equipo de desarrollo) |
| 93 | Manual para la compra | 1h | 2023-11-27 09:00 A | 2023-11-27 10:00 A | Personal (Equipo de desarrollo); Ordenador portátil [1 Horas] |

Changed:

| ID | Task | Start | Finish | Duration | Complete | Other |
| --- | --- | --- | --- | --- | --- | --- |
| 14 | **Fase de planificación AC** |  | 2023-10-30 12:00 → 2023-10-30 12:15 | 11h → 11.25h |  |  |
| 16 | Desarrollar la EDT |  | 2023-10-27 11:00 A → 2023-10-27 11:30 A | 2h → 2.5h |  | resources Personal (Equipo de dirección); Ordenador portátil [2 Horas] → Personal (Equipo de dirección); Ordenador portátil [4 Horas] |
| 19 | **Fase de planificación CR2** |  | 2023-10-30 09:04 → 2023-10-30 09:30 | 8.08h → 8.5h |  |  |
| 20 | Crear el cronograma mediante la secuenciación de las actividades |  | 2023-10-27 12:00 A → 2023-10-27 12:30 A | 3h → 3.5h |  | resources Personal (Equipo de dirección); Ordenador portátil [3 Horas] → Personal (Equipo de dirección); Ordenador portátil [5 Horas] |
| 23 | Redactar el listado de actividades |  | 2023-10-27 10:00 A → 2023-10-27 10:30 A | 1h → 1.5h |  | resources Personal (Equipo de dirección); Ordenador portátil [1 Horas] → Personal (Equipo de dirección); Ordenador portátil [3 Horas] |
| 46 | **Entregable E3.1** |  |  |  | 53% → 100% |  |
| 66 | **Fase de ejecución. Paquete de trabajo E3.1.2** | 2023-11-20 09:00 A |  |  | 0% → 100% |  |
| 67 | Realizar Sprint Planning | 2023-11-20 09:00 A | 2023-11-20 10:06 → 2023-11-20 09:30 A | 1.1h → 0.5h | 0% → 100% |  |
| 68 | Añadir cesta de la compra y permitir su modificación | 2023-11-20 09:00 A | 2023-11-20 11:00 → 2023-11-20 11:45 A | 2h → 2.75h | 0% → 100% |  |
| 69 | Inicio de la iteración 2 | 2023-11-20 09:00 A | 2023-11-20 19:00 A |  | 0% → 100% |  |
| 70 | Desarrollar la finalización de las compras | 2023-11-21 09:00 A | 2023-11-21 12:00 → 2023-11-21 13:00 A | 3h → 4h | 0% → 100% | resources Personal (Equipo de desarrollo); Ordenador portátil [3 Horas] → Personal (Equipo de desarrollo); Ordenador portátil [4 Horas] |
| 71 | Incluir regla de negocio sobre el stock de productos | 2023-11-22 09:00 A | 2023-11-22 09:33 A |  | 0% → 100% |  |
| 72 | Añadir regla de negocio sobre el envío gratuito | 2023-11-22 09:00 A | 2023-11-22 09:33 A |  | 0% → 100% |  |
| 73 | Desarrollar envío de correos tras completar un pedido | 2023-11-22 09:00 A | 2023-11-22 10:30 A |  | 0% → 100% |  |
| 74 | Hacer datos de la tienda siempre visibles | 2023-11-21 09:00 A | 2023-11-21 10:00 → 2023-11-21 09:15 A | 1h → 0.25h | 0% → 100% |  |
| 75 | Señalar productos agotados | 2023-11-20 09:00 A | 2023-11-20 09:33 A |  | 0% → 100% |  |
| 76 | Añadir protocolos de seguridad a la aplicación | 2023-11-23 09:00 A | 2023-11-23 13:00 → 2023-11-23 12:00 A | 4h → 3h | 0% → 100% |  |
| 77 | Implementar consulta de estados del pedido para cliente registrado y no registrado | 2023-11-23 15:00 A | 2023-11-23 17:00 → 2023-11-24 10:00 A (+1d) | 2h → 5h | 0% → 100% | resources Personal (Equipo de desarrollo); Ordenador portátil [2 Horas] → Personal (Equipo de desarrollo); Ordenador portátil [5 Horas] |
| 78 | Realizar Sprint Review | 2023-11-24 09:00 A | 2023-11-24 09:30 A |  | 0% → 100% |  |
| 79 | Realizar Sprint Retrospective | 2023-11-27 09:00 A | 2023-11-27 10:00 A |  | 0% → 100% |  |
| 80 | **Fase de ejecución. Paquete de trabajo E3.1.3** | 2023-11-27 09:00 A |  |  | 0% → 100% |  |
| 81 | Realizar Sprint Planning | 2023-11-27 09:00 A | 2023-11-27 10:06 → 2023-11-27 09:30 A | 1.1h → 0.5h | 0% → 100% | resources Personal (Equipo de desarrollo); Ordenador portátil [1.1 Horas] → Personal (Equipo de desarrollo); Ordenador portátil [12.27 Horas] |
| 82 | Añadir protocolo de configuración de motocicletas | 2023-11-30 09:00 A | 2023-11-30 12:00 → 2023-11-30 13:00 A | 3h → 4h | 0% → 100% |  |
| 83 | Añadir funcionalidad de opiniones para los usuarios | 2023-11-27 09:00 A | 2023-11-27 10:30 → 2023-11-27 11:00 A | 1.5h → 2h | 0% → 100% | resources Personal (Equipo de desarrollo); Ordenador portátil [1.5 Horas] → Personal (Equipo de desarrollo); Ordenador portátil [2.5 Horas] |
| 84 | Añadir funcionalidad de reclamaciones para los usuarios | 2023-11-28 09:00 A | 2023-11-28 10:30 → 2023-11-28 10:00 A | 1.5h → 1h | 0% → 100% |  |
| 85 | Implementar gestión de los clientes para administradores | 2023-11-28 09:00 A | 2023-11-28 10:30 → 2023-11-28 11:00 A | 1.5h → 2h | 0% → 100% |  |
| 86 | Implementar gestión de los pedidos para los administradores | 2023-11-29 09:00 A | 2023-11-29 10:30 A |  | 0% → 100% |  |
| 87 | Implementar gestión de los productos para los administradores | 2023-11-29 09:00 A | 2023-11-29 10:30 → 2023-11-29 12:00 A | 1.5h → 3h | 0% → 100% |  |
| 88 | Implementar gestión de las reclamaciones para los administradores | 2023-11-27 09:00 A | 2023-11-27 10:30 → 2023-11-27 10:00 A | 1.5h → 1h | 0% → 100% |  |
| 90 | Implementar gestión de las ventas para administradores | 2023-11-30 09:00 A | 2023-11-30 10:30 → 2023-11-30 11:00 A | 1.5h → 2h | 0% → 100% |  |
| 91 | Realizar Sprint Review | 2023-11-30 09:00 A | 2023-11-30 09:30 A |  | 0% → 100% |  |
| 92 | Realizar Sprint Retrospective | 2023-12-04 09:00 → 2023-12-01 09:00 A (-3d) | 2023-12-04 10:00 → 2023-12-01 10:00 A (-3d) |  | 0% → 100% |  |
| 94 | Inicio de la iteración 3 | 2023-11-27 09:00 A | 2023-11-27 19:00 A |  | 0% → 100% |  |
| 95 | **Entregable S3.2** |  |  |  | 42% → 100% |  |
| 98 | Realizar seguimiento del proyecto y generar la documentación respectiva a la iteración 2 | 2023-11-24 09:00 A | 2023-11-27 15:12 → 2023-11-27 11:00 A | 12.2h → 10h | 0% → 100% |  |
| 99 | Realizar seguimiento del proyecto y generar la documentación respectiva a la iteración 3 | 2023-12-01 09:00 A | 2023-12-04 15:12 → 2023-12-04 13:00 A | 12.2h → 12h | 0% → 100% |  |
| 100 | **Fase de cierre. Paquete de trabajo CI4** | 2023-12-04 09:00 A |  |  | 0% → 100% |  |
| 101 | Cierre del proyecto | 2023-12-04 09:00 A | 2023-12-04 19:00 A |  | 0% → 100% |  |
| 102 | Presentación del proyecto | 2023-12-04 09:00 A | 2023-12-04 19:00 A |  | 0% → 100% |  |
| 103 | Entrega del proyecto | 2023-12-04 09:00 A | 2023-12-04 19:00 A |  | 0% → 100% |  |
| 104 | Desarrollar un manual para el despliegue del contenedor | 2023-12-05 09:00 A | 2023-12-05 10:00 A |  | 0% → 100% |  |
| 105 | Desarrollo de la presentación de cierre | 2023-12-12 09:00 A | 2023-12-12 10:00 A |  | 0% → 100% |  |
| 106 | Desarrollo del informe de cierre | 2023-12-11 09:00 A | 2023-12-11 10:00 A |  | 0% → 100% |  |
| 107 | Registro de lecciones aprendidas | 2023-12-05 09:00 A | 2023-12-05 10:00 A |  | 0% → 100% |  |
